# WBS

Schedule from MS Project, 2025-03-03 to 2025-12-31.

## Calendars

- Standard: Mon-Fri 08:00-12:00, 13:00-17:00; Sat-Sun off.

## Schedule

| ID | WBS | Task | Type | Duration | Start | Finish | Predecessors | Total slack | Free slack |
| --- | --- | --- | --- | --- | --- | --- | --- | --- | --- |
| 1 | 1 | **1. Planning & Approval** |  | 33d | 2025-03-03 | 2025-04-16 |  |  |  |
| 2 | 1.1 | **Define project scope and objectives** |  | 13d | 2025-03-03 | 2025-03-19 |  | 185d |  |
| 3 | 1.1.1 | Identify digital transformation goals |  | 4d | 2025-03-03 | 2025-03-06 |  | 185d | 0d |
| 4 | 1.1.2 | Document project objectives and expected outcomes |  | 2d | 2025-03-06 | 2025-03-07 | 3FS-1d | 185d | 0d |
| 5 | 1.1.3 | Finalize project scope inclusions and exclusions |  | 2d | 2025-03-18 | 2025-03-19 | 4, 9 | 185d | 0d |
| 6 | 1.2 | **Conduct needs assessment with hospital staff** |  | 7d | 2025-03-07 | 2025-03-17 |  | 185d |  |
| 7 | 1.2.1 | Identify existing operational challenges |  | 5d | 2025-03-07 | 2025-03-13 | 4SS+1d | 185d | 0d |
| 8 | 1.2.2 | Gather input from doctors, nurses, and admin staff |  | 5d | 2025-03-07 | 2025-03-13 | 7SS | 185d | 0d |
| 9 | 1.2.3 | Document key user requirements |  | 2d | 2025-03-14 | 2025-03-17 | 7, 8 | 185d | 0d |
| 10 | 1.3 | **Identify key stakeholders and assign roles** |  | 8d | 2025-03-20 | 2025-03-31 |  | 185d |  |
| 11 | 1.3.1 | Create stakeholder matrix (internal and external) |  | 3d | 2025-03-20 | 2025-03-24 | 5 | 185d | 0d |
| 12 | 1.3.2 | Assign project roles and responsibilities |  | 3d | 2025-03-25 | 2025-03-27 | 11 | 185d | 0d |
| 13 | 1.3.3 | Develop stakeholder communication strategy |  | 2d | 2025-03-28 | 2025-03-31 | 12 | 197d |  |
| 14 | 1.4 | **Approve budget and conduct risk assessment** |  | 10d | 2025-03-24 | 2025-04-04 |  | 186d |  |
| 15 | 1.4.1 | Discuss 1st Budget estimation |  | 4d | 2025-03-24 | 2025-03-27 | 5FS+2d | 186d | 0d |
| 16 | 1.4.2 | Meet with Board to approve budget |  | 1d | 2025-03-28 | 2025-03-28 | 15 | 197d | 0d |
| 17 | 1.4.3 | Finalize budget allocation per project component |  | 1d | 2025-03-31 | 2025-03-31 | 16 | 197d |  |
| 18 | 1.4.4 | Identify potential risks and mitigation strategies |  | 3d | 2025-03-31 | 2025-04-02 | 12FS+1d, 15 | 185d | 0d |
| 19 | 1.4.5 | Establish financial monitoring and control mechanisms |  | 2d | 2025-04-03 | 2025-04-04 | 18 | 185d | 0d |
| 20 | 1.5 | **Develop initial project charter** |  | 8d | 2025-04-07 | 2025-04-16 |  | 185d |  |
| 21 | 1.5.1 | Draft project charter |  | 3d | 2025-04-07 | 2025-04-09 | 19 | 185d | 0d |
| 22 | 1.5.2 | Discuss with stakeholders for charter approval |  | 2d | 2025-04-10 | 2025-04-11 | 21 | 187d | 2d |
| 23 | 1.5.3 | Establish project management framework |  | 3d | 2025-04-11 | 2025-04-15 | 21FS+1d | 185d | 0d |
| 24 | 1.5.4 | Schedule project kick-off meeting |  | 1d | 2025-04-16 | 2025-04-16 | 22, 23 | 185d |  |
| 25 | 1.5.5 | Project Approval and Planning Completed | milestone | 0d | 2025-04-16 | 2025-04-16 | 24 | 185d |  |

| ID | WBS | Task | Type | Duration | Start | Finish | Predecessors | Total slack | Free slack |
| --- | --- | --- | --- | --- | --- | --- | --- | --- | --- |
| 26 | 2 | **2. Research & System Requirements** |  | 23d? | 2025-04-16 | 2025-05-16 |  |  |  |
| 27 | 2.1 | **Define system requirements (EHR, billing, security, AI integration)** |  | 12d? | 2025-04-16 | 2025-05-01 |  | 0d |  |
| 28 | 2.1.1 | Specify EHR system functionality and integration needs |  | 5d | 2025-04-16 | 2025-04-22 |  | 0d |  |
| 29 | 2.1.2 | Define cybersecurity protocols and access controls |  | 4d | 2025-04-25 | 2025-04-30 | 28FS+2d | 0d |  |
| 30 | 2.1.3 | Identify AI-driven diagnostic support requirements |  | 4d | 2025-04-16 | 2025-04-21 | 28SS | 2d | 1d |
| 31 | 2.1.4 | Establish telemedicine platform specifications |  | 3d | 2025-04-16 | 2025-04-18 | 28SS | 3d | 2d |
| 32 | 2.1.5 | Identify infrastructure upgrade needs |  | 5d | 2025-04-23 | 2025-04-29 | 28, 30, 31 | 1d |  |
| 33 | 2.1.6 | Finalize project deliverables |  | 1d? | 2025-05-01 | 2025-05-01 | 28, 29, 30, 31, 32 | 0d |  |
| 34 | 2.2 | **Select technology solutions and vendors** |  | 11d | 2025-05-02 | 2025-05-19 |  | 0d |  |
| 35 | 2.2.1 | Research available system solutions from 3rd party vendors |  | 5d | 2025-05-02 | 2025-05-08 | 33 | 0d |  |
| 36 | 2.2.2 | Compare vendor proposals and negotiate contracts |  | 5d | 2025-05-09 | 2025-05-15 | 35 | 0d |  |
| 37 | 2.2.3 | Obtain approval by project sponsor |  | 2d | 2025-05-15 | 2025-05-16 | 36FS-1d | 0d |  |
| 38 | 2.2.4 | Research and Project Scope completion | milestone, manual | 0d | 2025-05-19 | 2025-05-19 | 37 |  |  |
| 39 | 3 | **System Development & Testing** |  | 65d | 2025-05-19 | 2025-08-15 |  |  |  |
| 40 | 3.1 | **Develop the hospital management system (HMS)** |  | 26d | 2025-05-19 | 2025-06-23 |  | 0d |  |
| 41 | 3.1.1 | Design system architecture and data flow |  | 10d | 2025-05-19 | 2025-05-30 | 37 | 0d |  |
| 42 | 3.1.2 | Consult 3rd party vendor for EHR integration |  | 4d | 2025-05-29 | 2025-06-03 | 41FS-2d | 140d | 0d |
| 43 | 3.1.3 | EHR integration |  | 10d | 2025-06-02 | 2025-06-13 | 42SS+2d | 140d | 0d |
| 44 | 3.1.4 | Configure billing and scheduling systems |  | 10d | 2025-06-05 | 2025-06-18 | 43SS+3d | 140d |  |
| 45 | 3.1.5 | Consult cybersecurity 3rd party vendor |  | 4d | 2025-06-04 | 2025-06-09 | 41FS+2d | 0d |  |
| 46 | 3.1.6 | Implement cybersecurity measures |  | 10d | 2025-06-09 | 2025-06-20 | 45SS+3d | 0d |  |
| 47 | 3.1.7 | Finalize HMS 1.0 |  | 1d | 2025-06-23 | 2025-06-23 | 46 | 0d |  |
| 48 | 3.2 | **Development of AI diagnostics system & Telemedicine** |  | 39d | 2025-05-19 | 2025-07-10 |  | 3d |  |
| 49 | 3.2.1 | Consult with 3rd party AI vendor |  | 4d | 2025-05-19 | 2025-05-22 | 41SS | 18d | 0d |
| 50 | 3.2.2 | Develop AI algorithms for CT and MRI diagnostics |  | 10d | 2025-05-23 | 2025-06-05 | 49 | 18d | 0d |
| 51 | 3.2.3 | Integrate AI tools with hospital imaging systems |  | 10d | 2025-06-06 | 2025-06-19 | 50 | 18d | 2d |
| 52 | 3.2.4 | Establish end-to-end encryption for patient records |  | 6d | 2025-06-10 | 2025-06-17 | 51SS, 45 | 16d |  |
| 53 | 3.2.5 | Develop telemedicine functionality |  | 12d | 2025-06-24 | 2025-07-09 | 47 | 0d |  |
| 54 | 3.2.6 | Finalize AI and teleemdicine systems 1.0 |  | 1d | 2025-07-10 | 2025-07-10 | 53, 52 | 0d |  |

| ID | WBS | Task | Type | Duration | Start | Finish | Predecessors | Total slack | Free slack |
| --- | --- | --- | --- | --- | --- | --- | --- | --- | --- |
| 55 | 3.3 | **Conduct internal system testing and fix major issues** |  | 26d | 2025-07-11 | 2025-08-15 |  | 0d |  |
| 56 | 3.3.1 | Perform initial system functionality testing |  | 12d | 2025-07-11 | 2025-07-28 | 47, 54 | 0d |  |
| 57 | 3.3.2 | Identify and document software bugs |  | 5d | 2025-07-24 | 2025-07-30 | 56FS-3d | 0d |  |
| 58 | 3.3.3 | Conduct penetration testing for security validation |  | 7d | 2025-07-31 | 2025-08-08 | 57 | 0d |  |
| 59 | 3.3.4 | Implement necessary system fixes |  | 5d | 2025-08-07 | 2025-08-13 | 58FS-2d | 0d |  |
| 60 | 3.3.5 | Final System Test |  | 2d | 2025-08-14 | 2025-08-15 | 59 | 0d |  |
| 61 | 3.3.6 | System Development & Testing Completion | milestone | 0d | 2025-08-15 | 2025-08-15 | 60 | 98d |  |
| 62 | 4 | **System Integration & Training** |  | 55d | 2025-08-18 | 2025-10-31 |  |  |  |
| 63 | 4.1 | **Deploy HMS in a pilot department for initial testing** |  | 15d | 2025-08-18 | 2025-09-05 |  | 0d |  |
| 64 | 4.1.1 | Select department for pilot implementation |  | 3d | 2025-08-18 | 2025-08-20 | 60 | 0d |  |
| 65 | 4.1.2 | Configure pilot system environment |  | 4d | 2025-08-21 | 2025-08-26 | 64 | 0d |  |
| 66 | 4.1.3 | Conduct real-time testing with hospital staff |  | 7d | 2025-08-27 | 2025-09-04 | 65 | 0d |  |
| 67 | 4.1.4 | Gather feedback |  | 5d | 2025-08-27 | 2025-09-02 | 66SS | 0d |  |
| 68 | 4.1.5 | Make initial system refinements |  | 5d | 2025-09-01 | 2025-09-05 | 67SS+3d | 0d |  |
| 69 | 4.2 | **Train hospital staff on system usage and security procedures** |  | 26d | 2025-08-18 | 2025-09-22 |  | 2d |  |
| 70 | 4.2.1 | Develop training materials and manuals |  | 10d | 2025-08-18 | 2025-08-29 | 60 | 2d | 0d |
| 71 | 4.2.2 | Conduct in-person training sessions |  | 10d | 2025-09-03 | 2025-09-16 | 70, 68SS+2d | 0d |  |
| 72 | 4.2.3 | Organize cybersecurity awareness workshops |  | 10d | 2025-09-01 | 2025-09-12 | 70 | 78d |  |
| 73 | 4.2.4 | Evaluate staff readiness through quizzes |  | 4d | 2025-09-17 | 2025-09-22 | 71 | 0d |  |
| 74 | 4.3 | **Optimize system performance based on feedback** |  | 29d | 2025-09-23 | 2025-10-31 |  | 0d |  |
| 75 | 4.3.1 | Analyze feedback from pilot testing and training |  | 5d | 2025-09-23 | 2025-09-29 | 67, 73 | 0d |  |
| 76 | 4.3.2 | Update system functionalities based on user feedback |  | 12d | 2025-09-26 | 2025-10-13 | 75FS-2d | 0d |  |
| 77 | 4.3.3 | Conduct secondary user acceptance testing (UAT) |  | 7d | 2025-10-14 | 2025-10-22 | 76 | 0d |  |
| 78 | 4.3.4 | Finalize system configurations for full deployment |  | 7d | 2025-10-23 | 2025-10-31 | 77 | 0d |  |
| 79 | 4.3.5 | Training & Testing completion | milestone | 0d | 2025-10-31 | 2025-10-31 | 78 | 0d |  |

| ID | WBS | Task | Type | Duration | Start | Finish | Predecessors | Total slack | Free slack |
| --- | --- | --- | --- | --- | --- | --- | --- | --- | --- |
| 80 | 5 | **Full Deployment** |  | 24d | 2025-11-03 | 2025-12-04 |  |  |  |
| 81 | 5.1 | **Pre-Deployment Preparations** |  | 6d | 2025-11-03 | 2025-11-10 |  | 0d |  |
| 82 | 5.1.1 | Finalize deployment plan |  | 6d | 2025-11-03 | 2025-11-10 | 79 | 0d |  |
| 83 | 5.1.2 | Verify system configurations |  | 2d | 2025-11-07 | 2025-11-10 | 82FS-2d | 0d |  |
| 84 | 5.2 | **Full System Roll-out (Go-Live)** |  | 12d | 2025-11-07 | 2025-11-24 |  | 2d |  |
| 85 | 5.2.1 | Begin deployment in phases |  | 10d | 2025-11-11 | 2025-11-24 | 83 | 0d |  |
| 86 | 5.2.2 | Migrate existing hospital data to the new system |  | 3d | 2025-11-10 | 2025-11-12 | 83SS+1d | 35d |  |
| 87 | 5.2.3 | Provide on-site IT & vendor support |  | 10d | 2025-11-07 | 2025-11-20 | 83SS | 29d |  |
| 88 | 5.3 | **Post-Deployment Stabilization** |  | 3d | 2025-11-25 | 2025-11-27 |  | 0d |  |
| 89 | 5.3.1 | Conduct live system validation to ensure funcitonality |  | 3d | 2025-11-25 | 2025-11-27 | 85 | 0d |  |
| 90 | 5.3.2 | Address immediate issues |  | 3d | 2025-11-25 | 2025-11-27 | 89SS | 24d |  |
| 91 | 5.4 | **Compliance & Security Validation** |  | 5d | 2025-11-28 | 2025-12-04 |  | 0d |  |
| 92 | 5.4.1 | Conduct compliance audit (GDPR, HIPAA) |  | 3d | 2025-11-28 | 2025-12-02 | 89 | 0d |  |
| 93 | 5.4.2 | Perform final cybersecurity assessment |  | 2d | 2025-12-03 | 2025-12-04 | 92 | 0d |  |
| 94 | 5.4.3 | Full System Deployment Completed | milestone | 0d | 2025-12-04 | 2025-12-04 | 93 | 0d |  |
| 95 | 6 | **Evaluation & Optimization** |  | 18d | 2025-12-08 | 2025-12-31 |  |  |  |
| 96 | 6.1 | **Conduct final system audit and performance review** |  | 4d | 2025-12-08 | 2025-12-11 |  | 14d |  |
| 97 | 6.1.1 | Assess system efficiency and user satisfaction |  | 3d | 2025-12-08 | 2025-12-10 | 94 | 14d | 0d |
| 98 | 6.1.2 | Verify functionality of all system components |  | 2d | 2025-12-08 | 2025-12-09 | 94 | 16d |  |
| 99 | 6.1.3 | Identify areas requiring further optimization |  | 2d | 2025-12-10 | 2025-12-11 | 97FS-1d | 14d |  |
| 100 | 6.2 | **Gather user feedback and address necessary improvements** |  | 9d | 2025-12-10 | 2025-12-22 |  | 0d |  |
| 101 | 6.2.1 | Collect feedback via surveys and stakeholder meetings |  | 3d | 2025-12-10 | 2025-12-12 | 94FS+3d | 0d |  |
| 102 | 6.2.2 | Analyze data and categorize enhancement requests |  | 3d | 2025-12-15 | 2025-12-17 | 101 | 0d |  |
| 103 | 6.2.3 | Develop a post-implementation improvement plan |  | 2d | 2025-12-16 | 2025-12-17 | 102SS+1d | 0d |  |
| 104 | 6.2.4 | Implement prioritized system upgrades |  | 3d | 2025-12-18 | 2025-12-22 | 103 | 0d |  |

| ID | WBS | Task | Type | Duration | Start | Finish | Predecessors | Total slack |
| --- | --- | --- | --- | --- | --- | --- | --- | --- |
| 105 | 6.3 | **Project Closure & Transition to Maintenance** |  | 7d | 2025-12-23 | 2025-12-31 |  | 0d |
| 106 | 6.3.1 | Prepare and submit project completion report |  | 4d | 2025-12-23 | 2025-12-26 | 104 | 0d |
| 107 | 6.3.2 | Conduct final stakeholder review and approval |  | 2d | 2025-12-29 | 2025-12-30 | 106 | 0d |
| 108 | 6.3.3 | Document lessons learned for future projects |  | 1d | 2025-12-23 | 2025-12-23 | 104 | 5d |
| 109 | 6.3.4 | Officially close project and transition to maintenance phase |  | 1d | 2025-12-31 | 2025-12-31 | 106, 107, 108 | 0d |
| 110 | 6.3.5 | Project Optimized and Delivered | milestone | 0d | 2025-12-31 | 2025-12-31 | 109 | 0d |
